# VÉLO MMO

Schedule from MS Project, 2018-04-03 to 2019-05-16.
Externalisation de la fabrication des moteurs éle
VÉLO MMO

## Calendars

- Projet VÉLO MMO: Mon-Fri 08:00-12:00, 13:00-17:00; Sat-Sun off. Exceptions (off unless hours are given): 2018-05-01 to 2022-05-01 (Fête du travail, recurring), 2018-05-08 (Victoire 1945), 2018-05-10 (Ascension), 2018-07-14 to 2022-07-14 (Fête nationale, recurring), 2018-08-01 to 2018-08-07 (Fermeture du site), 2018-08-15 to 2022-08-15 (Assomption , recurring), 2018-11-01 to 2022-11-01 (Toussaint , recurring), 2018-11-11 to 2022-11-11 (Armistice , recurring), 2018-12-25 (Noël), 2019-01-01 to 2023-01-01 (Jour de l'an, recurring).

## Schedule

| ID | WBS | Task | Type | Duration | Start | Finish | Predecessors | Total slack | Free slack |
| --- | --- | --- | --- | --- | --- | --- | --- | --- | --- |
| 1 | 1 | **Choix du sous-traitant** |  | 91d | 2018-04-03 | 2018-08-20 |  | 0d |  |
| 2 | 1.1 | **Appel d'offre et consultation** |  | 54d | 2018-04-03 | 2018-06-20 |  | 0d |  |
| 3 | 1.1.1 | Constitution du cahier des charges |  | 15d | 2018-04-03 | 2018-04-23 |  | 0d |  |
| 4 | 1.1.2 | Sélection des sous-traitants |  | 20d | 2018-04-24 | 2018-05-24 | 3 | 0d |  |
| 5 | 1.1.3 | Lancement des appels d’offres |  | 3d | 2018-05-25 | 2018-05-29 | 4 | 0d |  |
| 6 | 1.1.4 | Etablissement des grilles de sélection du sous-traitant |  | 5d | 2018-05-30 | 2018-06-05 | 5 | 10d | 0d |
| 7 | 1.1.5 | Définition du processus industriel |  | 10d | 2018-05-30 | 2018-06-12 | 6SS | 226d | 0d |
| 8 | 1.1.6 | Choix du processus d’approvisionnement logistique |  | 3d | 2018-06-13 | 2018-06-15 | 7 | 14d | 0d |
| 9 | 1.1.7 | Estimation de prix de référence (prix d’achat) |  | 3d | 2018-06-18 | 2018-06-20 | 8 | 14d |  |
| 10 | 1.2 | Retour des offres des sous-traitants | milestone | 0d | 2018-06-19 | 2018-06-19 | 5FS+15d | 0d |  |
| 11 | 1.3 | **Analyse et sélection du sous-traitant** |  | 38d | 2018-06-20 | 2018-08-20 |  | 0d |  |
| 12 | 1.3.1 | Revue des offres avec les sous-traitants |  | 15d | 2018-06-20 | 2018-07-10 | 10, 6 | 0d |  |
| 13 | 1.3.2 | Négociation avec les sous-traitants |  | 15d | 2018-07-11 | 2018-07-31 | 12, 9 | 0d |  |
| 14 | 1.3.3 | Sélection d’un sous-traitant |  | 2d | 2018-08-08 | 2018-08-09 | 13 | 0d |  |
| 15 | 1.3.4 | Lancement de la procédure d’agrément du sous-traitant |  | 3d | 2018-08-10 | 2018-08-14 | 14 | 0d |  |
| 16 | 1.3.5 | Lancement de l’analyse des risques |  | 3d | 2018-08-16 | 2018-08-20 | 15 | 0d |  |
| 17 | 1.4 | Signature du contrat d’achat | milestone | 0d | 2018-08-20 | 2018-08-20 | 16 | 0d |  |
| 18 | 2 | **Industrialisation et validation du sous-traitant** |  | 69d | 2018-08-21 | 2018-11-26 |  | 0d |  |
| 19 | 2.1 | **Préparation de l'industrialisation** |  | 34d | 2018-08-21 | 2018-10-05 |  | 0d |  |
| 20 | 2.1.1 | Réalisation du planning d’industrialisation |  | 5d | 2018-08-21 | 2018-08-27 | 17 | 0d |  |
| 21 | 2.1.2 | Planification des formations du personnel |  | 1d | 2018-08-28 | 2018-08-28 | 20 | 0d |  |
| 22 | 2.1.3 | Identification des besoins de qualification des installations |  | 2d | 2018-08-29 | 2018-08-30 | 21 | 0d |  |
| 23 | 2.1.4 | Initialisation du Dossier de validation industrielle (Budget, programme de validation, planning...) |  | 8d | 2018-08-31 | 2018-09-11 | 22 | 0d |  |
| 24 | 2.1.5 | Commande des pièces de validation (proto) |  | 1d | 2018-09-12 | 2018-09-12 | 23 | 0d |  |
| 25 | 2.1.6 | Téléchargement des logiciels de gestion des commandes |  | 3d | 2018-08-29 | 2018-08-31 | 22SS | 25d | 0d |
| 26 | 2.1.7 | Installation des logiciels de gestion des commandes |  | 5d | 2018-09-03 | 2018-09-07 | 25 | 25d | 0d |
| 27 | 2.1.8 | Formation et certification du personnel du sous-traitant |  | 20d | 2018-09-10 | 2018-10-05 | 26 | 25d | 0d |
| 28 | 2.2 | Réception et validation du proto | milestone | 0d | 2018-09-26 | 2018-09-26 | 24FS+10d | 0d |  |

| ID | WBS | Task | Type | Duration | Start | Finish | Predecessors | Total slack |
| --- | --- | --- | --- | --- | --- | --- | --- | --- |
| 29 | 2.3 | **Industrialisation** |  | 42d | 2018-09-27 | 2018-11-26 |  | 0d |
| 30 | 2.3.1 | Réalisation de missions technique en support du sous-traitant |  | 30d | 2018-10-08 | 2018-11-19 | 27 | 25d |
| 31 | 2.3.2 | Mise en place d’un plan d’assurance qualité produit. |  | 15d | 2018-09-27 | 2018-10-17 | 28 | 0d |
| 32 | 2.3.3 | Etudes de Reproductibilité et Répétabilité |  | 10d | 2018-10-18 | 2018-10-31 | 31 | 0d |
| 33 | 2.3.4 | Réalisation du premier article |  | 10d | 2018-11-02 | 2018-11-15 | 26, 32 | 0d |
| 34 | 2.3.5 | Contrôle des pièces de validation |  | 2d | 2018-11-16 | 2018-11-19 | 33 | 0d |
| 35 | 2.3.6 | Finalisation et validation du plan d’assurance qualité produit |  | 5d | 2018-11-20 | 2018-11-26 | 34 | 0d |
| 36 | 2.4 | Agrément du sous-traitant | milestone | 0d | 2018-11-26 | 2018-11-26 | 35 | 0d |
| 37 | 3 | **Mise en production** |  | 120d | 2018-11-27 | 2019-05-16 |  | 0d |
| 38 | 3.1 | Lancement des pièces de production |  | 20d | 2018-11-27 | 2018-12-24 | 36 | 0d |
| 39 | 3.2 | Mise en œuvre de l’assistance au sous-traitant |  | 60d | 2018-12-26 | 2019-03-20 | 30, 38 | 0d |
| 40 | 3.3 | Livraison stabilisée en termes logistique et qualité |  | 40d | 2019-03-21 | 2019-05-16 | 38, 39 | 0d |
| 41 | 4 | Obtention du label qualité | milestone | 0d | 2019-05-16 | 2019-05-16 | 40 | 0d |
