# VÉLO MMO

Schedule from MS Project, 2018-04-03 to 2019-01-10.
Externalisation de la fabrication des moteurs éle
VÉLO MMO

## Calendars

- Projet VÉLO MMO: Mon-Fri 08:00-12:00, 13:00-17:00; Sat-Sun off. Exceptions (off unless hours are given): 2018-05-01 to 2022-05-01 (Fête du travail, recurring), 2018-05-08 (Victoire 1945), 2018-05-10 (Ascension), 2018-07-14 to 2022-07-14 (Fête nationale, recurring), 2018-08-01 to 2018-08-07 (Fermeture du site), 2018-08-15 to 2022-08-15 (Assomption , recurring), 2018-11-01 to 2022-11-01 (Toussaint , recurring), 2018-11-11 to 2022-11-11 (Armistice , recurring), 2018-12-25 (Noël), 2019-01-01 to 2023-01-01 (Jour de l'an, recurring).

## Schedule

| ID | WBS | Task | Type | Duration | Start | Finish | Predecessors | Total slack | Free slack | Deadline |
| --- | --- | --- | --- | --- | --- | --- | --- | --- | --- | --- |
| 1 | 1 | **Choix du sous-traitant** |  | 62d | 2018-04-03 | 2018-07-02 |  | 0d |  |  |
| 2 | 1.1 | **Appel d'offre et consultation** |  | 44d | 2018-04-03 | 2018-06-06 |  | 0d |  |  |
| 3 | 1.1.1 | Constitution du cahier des charges |  | 15d | 2018-04-03 | 2018-04-23 |  | 0d |  |  |
| 4 | 1.1.2 | Sélection des sous-traitants |  | 10d | 2018-04-24 | 2018-05-09 | 3 | 0d |  |  |
| 5 | 1.1.3 | Lancement des appels d’offres |  | 3d | 2018-05-11 | 2018-05-15 | 4 | 0d |  |  |
| 6 | 1.1.4 | Etablissement des grilles de sélection du sous-traitant |  | 5d | 2018-05-16 | 2018-05-22 | 5 | 147d | 0d |  |
| 7 | 1.1.5 | Définition du processus industriel |  | 10d | 2018-05-16 | 2018-05-29 | 6SS | 147d | 0d |  |
| 8 | 1.1.6 | Choix du processus d’approvisionnement logistique |  | 3d | 2018-05-30 | 2018-06-01 | 7 | 2d | 0d |  |
| 9 | 1.1.7 | Estimation de prix de référence (prix d’achat) |  | 3d | 2018-06-04 | 2018-06-06 | 8 | 2d |  |  |
| 10 | 1.2 | Retour des offres des sous-traitants | milestone | 0d | 2018-05-29 | 2018-05-29 | 5FS+10d | 0d |  | 2018-05-29 |
| 11 | 1.3 | **Analyse et sélection du sous-traitant** |  | 24d | 2018-05-30 | 2018-07-02 |  | 0d |  |  |
| 12 | 1.3.1 | Revue des offres avec les sous-traitants |  | 8d | 2018-05-30 | 2018-06-08 | 10, 6 | 0d |  |  |
| 13 | 1.3.2 | Négociation avec les sous-traitants |  | 8d | 2018-06-11 | 2018-06-20 | 12, 9 | 0d |  |  |
| 14 | 1.3.3 | Sélection d’un sous-traitant |  | 2d | 2018-06-21 | 2018-06-22 | 13 | 0d |  |  |
| 15 | 1.3.4 | Lancement de la procédure d’agrément du sous-traitant |  | 3d | 2018-06-25 | 2018-06-27 | 14 | 0d |  |  |
| 16 | 1.3.5 | Lancement de l’analyse des risques |  | 3d | 2018-06-28 | 2018-07-02 | 15 | 0d |  |  |
| 17 | 1.4 | Signature du contrat d’achat | milestone | 0d | 2018-07-02 | 2018-07-02 | 16 | 0d |  | 2018-07-02 |
| 18 | 2 | **Industrialisation et validation du sous-traitant** |  | 69d | 2018-07-03 | 2018-10-15 |  | 0d |  |  |
| 19 | 2.1 | **Préparation de l'industrialisation** |  | 19d | 2018-07-03 | 2018-07-27 |  | 0d |  |  |
| 20 | 2.1.1 | Réalisation du planning d’industrialisation |  | 5d | 2018-07-03 | 2018-07-09 | 17 | 0d |  |  |
| 21 | 2.1.2 | Planification des formations du personnel |  | 1d | 2018-07-10 | 2018-07-10 | 20 | 0d |  |  |
| 22 | 2.1.3 | Identification des besoins de qualification des installations |  | 2d | 2018-07-11 | 2018-07-12 | 21 | 0d |  |  |
| 23 | 2.1.4 | Initialisation du Dossier de validation industrielle (Budget, programme de validation, planning...) |  | 8d | 2018-07-13 | 2018-07-24 | 22 | 0d |  |  |
| 24 | 2.1.5 | Commande des pièces de validation (proto) |  | 1d | 2018-07-25 | 2018-07-25 | 23 | 0d |  |  |
| 25 | 2.1.6 | Téléchargement des logiciels de gestion des commandes |  | 3d | 2018-07-11 | 2018-07-13 | 22SS | 20d | 0d |  |
| 26 | 2.1.7 | Installation des logiciels de gestion des commandes |  | 5d | 2018-07-16 | 2018-07-20 | 25 | 20d | 0d |  |
| 27 | 2.1.8 | Formation et certification du personnel du sous-traitant |  | 5d | 2018-07-23 | 2018-07-27 | 26 | 20d | 0d |  |
| 28 | 2.2 | Réception et validation du proto | milestone | 0d | 2018-08-16 | 2018-08-16 | 24FS+10d | 0d |  | 2018-08-16 |

| ID | WBS | Task | Type | Duration | Start | Finish | Predecessors | Total slack | Deadline |
| --- | --- | --- | --- | --- | --- | --- | --- | --- | --- |
| 29 | 2.3 | **Industrialisation** |  | 50d | 2018-07-30 | 2018-10-15 |  | 0d |  |
| 30 | 2.3.1 | Réalisation de missions technique en support du sous-traitant |  | 30d | 2018-07-30 | 2018-09-17 | 27 | 20d |  |
| 31 | 2.3.2 | Mise en place d’un plan d’assurance qualité produit. |  | 15d | 2018-08-17 | 2018-09-06 | 28 | 0d |  |
| 32 | 2.3.3 | Etudes de Reproductibilité et Répétabilité |  | 10d | 2018-09-07 | 2018-09-20 | 31 | 0d |  |
| 33 | 2.3.4 | Réalisation du premier article |  | 10d | 2018-09-21 | 2018-10-04 | 26, 32 | 0d |  |
| 34 | 2.3.5 | Contrôle des pièces de validation |  | 2d | 2018-10-05 | 2018-10-08 | 33 | 0d |  |
| 35 | 2.3.6 | Finalisation et validation du plan d’assurance qualité produit |  | 5d | 2018-10-09 | 2018-10-15 | 34 | 0d |  |
| 36 | 2.4 | Agrément du sous-traitant | milestone | 0d | 2018-10-15 | 2018-10-15 | 35 | 0d | 2018-10-15 |
| 37 | 3 | **Mise en production** |  | 60d | 2018-10-16 | 2019-01-10 |  | 0d |  |
| 38 | 3.1 | Lancement des pièces de production |  | 20d | 2018-10-16 | 2018-11-13 | 36 | 0d |  |
| 39 | 3.2 | Mise en œuvre de l’assistance au sous-traitant |  | 60d | 2018-10-16 | 2019-01-10 | 30, 38SS | 0d |  |
| 40 | 3.3 | Livraison stabilisée en termes logistique et qualité |  | 40d | 2018-10-30 | 2018-12-26 | 38SS+1%, 39SS+10d | 10d |  |
| 41 | 4 | Obtention du label qualité | milestone | 0d | 2019-01-10 | 2019-01-10 | 40, 39, 38 | 0d | 2019-01-10 |
