# VÉLO MMO

Schedule from MS Project, 2018-04-03 to 2019-01-18, costs in €.
Externalisation de la fabrication des moteurs éle
VÉLO MMO

## Calendars

- Projet VÉLO MMO: Mon-Fri 08:00-12:00, 13:00-17:00; Sat-Sun off. Exceptions (off unless hours are given): 2018-05-01 to 2022-05-01 (Fête du travail, recurring), 2018-05-08 (Victoire 1945), 2018-05-10 (Ascension), 2018-07-14 to 2022-07-14 (Fête nationale, recurring), 2018-08-01 to 2018-08-07 (Fermeture du site), 2018-08-15 to 2022-08-15 (Assomption , recurring), 2018-11-01 to 2022-11-01 (Toussaint , recurring), 2018-11-11 to 2022-11-11 (Armistice , recurring), 2018-12-25 (Noël), 2019-01-01 to 2023-01-01 (Jour de l'an, recurring).
- Samedis travaillés: Mon-Fri 08:00-12:00, 13:00-17:00; Sat 08:00-12:00, 13:00-18:00; Sun off. Exceptions (off unless hours are given): 2018-05-01 to 2022-05-01 (Fête du travail, recurring), 2018-05-08 (Victoire 1945), 2018-05-10 (Ascension), 2018-07-14 to 2022-07-14 (Fête nationale, recurring), 2018-08-01 to 2018-08-07 (Fermeture du site), 2018-08-15 to 2022-08-15 (Assomption , recurring), 2018-11-01 to 2022-11-01 (Toussaint , recurring), 2018-11-11 to 2022-11-11 (Armistice , recurring), 2018-12-25 (Noël), 2019-01-01 to 2023-01-01 (Jour de l'an, recurring).

## Resources

| Resource | Unit | Rate | Cost per use |
| --- | --- | --- | --- |
| Acheteur |  | 35 |  |
| Ingénieur Qualité |  | 25 |  |
| Contrôleur Qualité |  | 15 |  |
| Ingénieur Industrialisation |  | 35 |  |
| Ingénieur Production |  | 25 |  |
| Informaticien |  | 20 |  |
| Responsable Logistique |  | 30 |  |
| Formateur |  | 30 |  |
| Sous-traitant |  |  | 1000 |
| Technicien Production |  | 15 |  |
| Licences Logiciel de gestion des commandes | Licence | 1500 |  |
| Serveur Logiciel de gestion des commandes | Unité | 1000 |  |
| Frais de déplacement |  |  |  |
| Fournitures diverses |  |  |  |
| Outillage Industrialisation |  |  |  |

## Schedule

| ID | WBS | Task | Duration | Start | Finish | Total slack | Free slack | Constraint |
| --- | --- | --- | --- | --- | --- | --- | --- | --- |
| 1 | 1 | **Revue du projet** | 187.25d | 2018-04-03 08:00 | 2019-01-07 10:00 | 9.75d | 8.75d |  |
| 2 | 1.1 | Revue du projet 1 | 2h | 2018-04-03 08:00 | 2018-04-03 10:00 | 195.75d |  | start no earlier than 2018-04-02 08:00 |
| 3 | 1.2 | Revue du projet 2 | 2h | 2018-04-09 08:00 | 2018-04-09 10:00 | 191.75d |  | start no earlier than 2018-04-09 08:00 |
| 4 | 1.3 | Revue du projet 3 | 2h | 2018-04-16 08:00 | 2018-04-16 10:00 | 186.75d |  | start no earlier than 2018-04-16 08:00 |
| 5 | 1.4 | Revue du projet 4 | 2h | 2018-04-23 08:00 | 2018-04-23 10:00 | 181.75d |  | start no earlier than 2018-04-23 08:00 |
| 6 | 1.5 | Revue du projet 5 | 2h | 2018-04-30 08:00 | 2018-04-30 10:00 | 176.75d |  | start no earlier than 2018-04-30 08:00 |
| 7 | 1.6 | Revue du projet 6 | 2h | 2018-05-07 08:00 | 2018-05-07 10:00 | 172.75d |  | start no earlier than 2018-05-07 08:00 |
| 8 | 1.7 | Revue du projet 7 | 2h | 2018-05-14 08:00 | 2018-05-14 10:00 | 169.75d |  | start no earlier than 2018-05-14 08:00 |
| 9 | 1.8 | Revue du projet 8 | 2h | 2018-05-21 08:00 | 2018-05-21 10:00 | 164.75d |  | start no earlier than 2018-05-21 08:00 |
| 10 | 1.9 | Revue du projet 9 | 2h | 2018-05-28 08:00 | 2018-05-28 10:00 | 159.75d |  | start no earlier than 2018-05-28 08:00 |
| 11 | 1.10 | Revue du projet 10 | 2h | 2018-06-04 08:00 | 2018-06-04 10:00 | 154.75d |  | start no earlier than 2018-06-04 08:00 |
| 12 | 1.11 | Revue du projet 11 | 2h | 2018-06-11 08:00 | 2018-06-11 10:00 | 149.75d |  | start no earlier than 2018-06-11 08:00 |
| 13 | 1.12 | Revue du projet 12 | 2h | 2018-06-18 08:00 | 2018-06-18 10:00 | 144.75d |  | start no earlier than 2018-06-18 08:00 |
| 14 | 1.13 | Revue du projet 13 | 2h | 2018-06-25 08:00 | 2018-06-25 10:00 | 139.75d |  | start no earlier than 2018-06-25 08:00 |
| 15 | 1.14 | Revue du projet 14 | 2h | 2018-07-02 08:00 | 2018-07-02 10:00 | 134.75d |  | start no earlier than 2018-07-02 08:00 |
| 16 | 1.15 | Revue du projet 15 | 2h | 2018-07-09 08:00 | 2018-07-09 10:00 | 129.75d |  | start no earlier than 2018-07-09 08:00 |
| 17 | 1.16 | Revue du projet 16 | 2h | 2018-07-16 08:00 | 2018-07-16 10:00 | 124.75d |  | start no earlier than 2018-07-16 08:00 |
| 18 | 1.17 | Revue du projet 17 | 2h | 2018-07-23 08:00 | 2018-07-23 10:00 | 119.75d |  | start no earlier than 2018-07-23 08:00 |
| 19 | 1.18 | Revue du projet 18 | 2h | 2018-07-30 08:00 | 2018-07-30 10:00 | 114.75d |  | start no earlier than 2018-07-30 08:00 |
| 20 | 1.19 | Revue du projet 19 | 2h | 2018-08-08 08:00 | 2018-08-08 10:00 | 112.75d |  | start no earlier than 2018-08-06 08:00 |
| 21 | 1.20 | Revue du projet 20 | 2h | 2018-08-13 08:00 | 2018-08-13 10:00 | 109.75d |  | start no earlier than 2018-08-13 08:00 |
| 22 | 1.21 | Revue du projet 21 | 2h | 2018-08-20 08:00 | 2018-08-20 10:00 | 105.75d |  | start no earlier than 2018-08-20 08:00 |
| 23 | 1.22 | Revue du projet 22 | 2h | 2018-08-27 08:00 | 2018-08-27 10:00 | 100.75d |  | start no earlier than 2018-08-27 08:00 |
| 24 | 1.23 | Revue du projet 23 | 2h | 2018-09-03 08:00 | 2018-09-03 10:00 | 95.75d |  | start no earlier than 2018-09-03 08:00 |
| 25 | 1.24 | Revue du projet 24 | 2h | 2018-09-10 08:00 | 2018-09-10 10:00 | 90.75d |  | start no earlier than 2018-09-10 08:00 |
| 26 | 1.25 | Revue du projet 25 | 2h | 2018-09-17 08:00 | 2018-09-17 10:00 | 85.75d |  | start no earlier than 2018-09-17 08:00 |
| 27 | 1.26 | Revue du projet 26 | 2h | 2018-09-24 08:00 | 2018-09-24 10:00 | 80.75d |  | start no earlier than 2018-09-24 08:00 |
| 28 | 1.27 | Revue du projet 27 | 2h | 2018-10-01 08:00 | 2018-10-01 10:00 | 75.75d |  | start no earlier than 2018-10-01 08:00 |
| 29 | 1.28 | Revue du projet 28 | 2h | 2018-10-08 08:00 | 2018-10-08 10:00 | 70.75d |  | start no earlier than 2018-10-08 08:00 |
| 30 | 1.29 | Revue du projet 29 | 2h | 2018-10-15 08:00 | 2018-10-15 10:00 | 65.75d |  | start no earlier than 2018-10-15 08:00 |
| 31 | 1.30 | Revue du projet 30 | 2h | 2018-10-22 08:00 | 2018-10-22 10:00 | 60.75d |  | start no earlier than 2018-10-22 08:00 |
| 32 | 1.31 | Revue du projet 31 | 2h | 2018-10-29 08:00 | 2018-10-29 10:00 | 55.75d |  | start no earlier than 2018-10-29 08:00 |
| 33 | 1.32 | Revue du projet 32 | 2h | 2018-11-05 08:00 | 2018-11-05 10:00 | 51.75d |  | start no earlier than 2018-11-05 08:00 |
| 34 | 1.33 | Revue du projet 33 | 2h | 2018-11-12 08:00 | 2018-11-12 10:00 | 46.75d |  | start no earlier than 2018-11-12 08:00 |
| 35 | 1.34 | Revue du projet 34 | 2h | 2018-11-19 08:00 | 2018-11-19 10:00 | 41.75d |  | start no earlier than 2018-11-19 08:00 |
| 36 | 1.35 | Revue du projet 35 | 2h | 2018-11-26 08:00 | 2018-11-26 10:00 | 36.75d |  | start no earlier than 2018-11-26 08:00 |
| 37 | 1.36 | Revue du projet 36 | 2h | 2018-12-03 08:00 | 2018-12-03 10:00 | 31.75d |  | start no earlier than 2018-12-03 08:00 |
| 38 | 1.37 | Revue du projet 37 | 2h | 2018-12-10 08:00 | 2018-12-10 10:00 | 26.75d |  | start no earlier than 2018-12-10 08:00 |
| 39 | 1.38 | Revue du projet 38 | 2h | 2018-12-17 08:00 | 2018-12-17 10:00 | 21.75d |  | start no earlier than 2018-12-17 08:00 |
| 40 | 1.39 | Revue du projet 39 | 2h | 2018-12-24 08:00 | 2018-12-24 10:00 | 16.75d |  | start no earlier than 2018-12-24 08:00 |
| 41 | 1.40 | Revue du projet 40 | 2h | 2018-12-31 08:00 | 2018-12-31 10:00 | 12.75d |  | start no earlier than 2018-12-31 08:00 |
| 42 | 1.41 | Revue du projet 41 | 2h | 2019-01-07 08:00 | 2019-01-07 10:00 | 8.75d |  | start no earlier than 2019-01-07 08:00 |

| ID | WBS | Task | Type | Duration | Start | Finish | Predecessors | Total slack | Free slack | Constraint | Deadline | Resources | Work | Cost |
| --- | --- | --- | --- | --- | --- | --- | --- | --- | --- | --- | --- | --- | --- | --- |
| 43 | 2 | **Choix du sous-traitant** |  | 65d | 2018-04-03 08:00 | 2018-07-05 17:00 |  | -8d | 0d |  |  |  | 790.4h | 26,016 |
| 44 | 2.1 | **Appel d'offre et consultation** |  | 44d | 2018-04-03 08:00 | 2018-06-06 17:00 |  | -8d | 0d |  |  |  | 529.6h | 16,480 |
| 45 | 2.1.1 | Constitution du cahier des charges |  | 15d | 2018-04-03 08:00 | 2018-04-23 17:00 |  | -8d | 0d |  |  | Acheteur; Ingénieur Qualité [50%]; Ingénieur Industrialisation [20%]; Ingénieur Production [10%]; Responsable Logistique [10%] | 228h | 7,200 |
| 46 | 2.1.2 | Sélection des sous-traitants |  | 10d | 2018-04-24 08:00 | 2018-05-09 17:00 | 45 | -8d | 0d |  |  | Acheteur [50%]; Ingénieur Qualité [50%] | 80h | 2,400 |
| 47 | 2.1.3 | Lancement des appels d’offres |  | 3d | 2018-05-11 08:00 | 2018-05-15 17:00 | 46 | -8d | 0d |  |  | Acheteur | 24h | 840 |
| 48 | 2.1.4 | Etablissement des grilles de sélection du sous-traitant |  | 5d | 2018-05-16 08:00 | 2018-05-22 17:00 | 47 | -3d | 0d |  |  | Acheteur [50%]; Ingénieur Qualité [50%] | 40h | 1,200 |
| 49 | 2.1.5 | Définition du processus industriel |  | 10d | 2018-05-16 08:00 | 2018-05-29 17:00 | 48SS | -3d | 0d |  |  | Acheteur [10%]; Ingénieur Qualité [50%]; Ingénieur Industrialisation [50%] | 88h | 2,680 |
| 50 | 2.1.6 | Choix du processus d’approvisionnement logistique |  | 3d | 2018-05-30 08:00 | 2018-06-01 17:00 | 49 | -3d | 0d |  |  | Acheteur [10%]; Ingénieur Qualité [50%]; Responsable Logistique | 38.4h | 1,104 |
| 51 | 2.1.7 | Estimation de prix de référence (prix d’achat) |  | 3d | 2018-06-04 08:00 | 2018-06-06 17:00 | 50 | -3d | 0d |  |  | Acheteur; Ingénieur Industrialisation [10%]; Ingénieur Production [10%]; Responsable Logistique [10%] | 31.2h | 1,056 |
| 52 | 2.2 | Retour des offres des sous-traitants | milestone | 0d | 2018-05-29 17:00 | 2018-05-29 17:00 | 47FS+10d | -8d | 0d |  | 2018-05-29 17:00 |  |  |  |
| 53 | 2.3 | **Analyse et sélection du sous-traitant** |  | 27d | 2018-05-30 08:00 | 2018-07-05 17:00 |  | -8d | 0d |  |  |  | 260.8h | 9,536 |
| 54 | 2.3.1 | Revue des offres avec les sous-traitants |  | 11d | 2018-05-30 08:00 | 2018-06-13 17:00 | 52, 48 | -8d | 0d |  |  | Acheteur; Ingénieur Qualité [20%]; Ingénieur Industrialisation [20%]; Ingénieur Production [20%]; Responsable Logistique [20%] | 115.2h | 3,712 |
| 55 | 2.3.2 | Négociation avec les sous-traitants |  | 8d | 2018-06-14 08:00 | 2018-06-25 17:00 | 54, 51 | -8d | 0d |  |  | Acheteur; Frais de déplacement [0.1%] | 64h | 3,240 |
| 56 | 2.3.3 | Sélection d’un sous-traitant |  | 2d | 2018-06-26 08:00 | 2018-06-27 17:00 | 55 | -8d | 0d |  |  | Acheteur; Ingénieur Qualité [20%]; Ingénieur Industrialisation [20%]; Ingénieur Production [20%]; Responsable Logistique [20%] | 28.8h | 928 |
| 57 | 2.3.4 | Lancement de la procédure d’agrément du sous-traitant |  | 3d | 2018-06-28 08:00 | 2018-07-02 17:00 | 56 | -8d | 0d |  |  | Acheteur; Ingénieur Qualité [10%]; Contrôleur Qualité [10%] | 28.8h | 936 |
| 58 | 2.3.5 | Lancement de l’analyse des risques |  | 3d | 2018-07-03 08:00 | 2018-07-05 17:00 | 57 | -8d | 0d |  |  | Acheteur [50%]; Ingénieur Qualité [50%] | 24h | 720 |
| 59 | 2.4 | Signature du contrat d’achat | milestone | 0d | 2018-07-05 17:00 | 2018-07-05 17:00 | 58 | -8d | 0d |  | 2018-07-02 17:00 |  |  |  |
| 60 | 3 | **Industrialisation et validation du sous-traitant** |  | 72d | 2018-07-06 08:00 | 2018-10-23 17:00 |  | -8d | 0d |  |  |  | 916h | 26,420 |
| 61 | 3.1 | **Préparation de l'industrialisation** |  | 19d | 2018-07-06 08:00 | 2018-08-08 17:00 |  | -8d | 0d |  |  |  | 300h | 13,180 |
| 62 | 3.1.1 | Réalisation du planning d’industrialisation |  | 5d | 2018-07-06 08:00 | 2018-07-12 17:00 | 59 | -8d | 0d |  |  | Acheteur [50%]; Ingénieur Industrialisation; Ingénieur Production [50%]; Responsable Logistique [50%] | 100h | 3,200 |
| 63 | 3.1.2 | Planification des formations du personnel |  | 1d | 2018-07-13 08:00 | 2018-07-13 17:00 | 62 | -8d | 0d |  |  | Formateur | 8h | 240 |
| 64 | 3.1.3 | Identification des besoins de qualification des installations |  | 2d | 2018-07-16 08:00 | 2018-07-17 17:00 | 63 | -8d | 0d |  |  | Technicien Production; Fournitures diverses [0.1%] | 16h | 740 |
| 65 | 3.1.4 | Initialisation du Dossier de validation industrielle (Budget, programme de validation, planning...) |  | 8d | 2018-07-18 08:00 | 2018-07-27 17:00 | 64 | -8d | 0d |  |  | Acheteur | 64h | 2,240 |
| 66 | 3.1.5 | Commande des pièces de validation (proto) |  | 1d | 2018-07-30 08:00 | 2018-07-30 17:00 | 65 | -8d | 0d |  |  | Acheteur | 8h | 280 |
| 67 | 3.1.6 | Téléchargement des logiciels de gestion des commandes |  | 3d | 2018-07-16 08:00 | 2018-07-18 17:00 | 64SS | 0d |  | start no earlier than 2018-07-16 08:00 |  | Informaticien | 24h | 480 |
| 68 | 3.1.7 | Installation des logiciels de gestion des commandes |  | 5d | 2018-07-19 08:00 | 2018-07-25 17:00 | 67 | 0d |  |  |  | Informaticien; Serveur Logiciel de gestion des commandes [2 Unité]; Licences Logiciel de gestion des commandes [1 Licence] | 40h | 4,300 |
| 69 | 3.1.8 | Formation et certification du personnel du sous-traitant |  | 5d | 2018-07-26 08:00 | 2018-08-08 17:00 | 68 | 0d |  |  |  | Formateur; Fournitures diverses [0.1%] | 40h | 1,700 |
| 70 | 3.2 | Réception et validation du proto | milestone | 0d | 2018-08-21 17:00 | 2018-08-21 17:00 | 66FS+10d | -8d | 0d |  | 2018-08-16 17:00 |  |  |  |

| ID | WBS | Task | Type | Duration | Start | Finish | Predecessors | Total slack | Free slack | Constraint | Deadline | Calendar | Resources | Work | Cost |
| --- | --- | --- | --- | --- | --- | --- | --- | --- | --- | --- | --- | --- | --- | --- | --- |
| 71 | 3.3 | **Industrialisation** |  | 57d | 2018-07-27 08:00 | 2018-10-23 17:00 |  | -6d | 0d |  |  |  |  | 616h | 13,240 |
| 72 | 3.3.1 | Réalisation de missions technique en support du sous-traitant |  | 30d | 2018-07-27 08:00 | 2018-09-14 17:00 | 69FS-4d | 0d |  | finish no later than 2018-09-14 17:00 |  |  | Contrôleur Qualité; Outillage Industrialisation [0.1%] | 240h | 4,600 |
| 73 | 3.3.2 | Mise en place d’un plan d’assurance qualité produit. |  | 15d | 2018-08-22 08:00 | 2018-09-11 17:00 | 70 | -8d | 0d |  |  |  | Ingénieur Qualité | 120h | 3,000 |
| 74 | 3.3.3 | Etudes de Reproductibilité et Répétabilité |  | 10d | 2018-09-12 08:00 | 2018-09-25 17:00 | 73 | -8d | 0d |  |  |  | Ingénieur Qualité | 80h | 2,000 |
| 75 | 3.3.4 | Réalisation du premier article |  | 10d | 2018-09-26 08:00 | 2018-10-09 17:00 | 68, 74 | -8d | 0d |  |  |  | Sous-traitant | 80h | 1,000 |
| 76 | 3.3.5 | Contrôle des pièces de validation |  | 2d | 2018-10-15 08:00 | 2018-10-16 17:00 | 75 | -11d | 0d |  |  |  | Contrôleur Qualité | 16h | 240 |
| 77 | 3.3.6 | Finalisation et validation du plan d’assurance qualité produit |  | 5d | 2018-10-17 08:00 | 2018-10-23 17:00 | 76 | -11d | 0d |  |  |  | Acheteur; Ingénieur Qualité | 80h | 2,400 |
| 78 | 3.4 | Agrément du sous-traitant | milestone | 0d | 2018-10-23 17:00 | 2018-10-23 17:00 | 77 | -6d | 0d |  | 2018-10-15 17:00 |  |  |  |  |
| 79 | 4 | **Mise en production** |  | 60d | 2018-10-24 08:00 | 2019-01-18 17:00 |  | -6d | 0d |  |  |  |  | 1600h | 33,800 |
| 80 | 4.1 | Lancement des pièces de production |  | 20d | 2018-10-24 08:00 | 2018-11-21 17:00 | 78 | -7.12d | 0d |  |  | Samedis travaillés | Acheteur; Ingénieur Production; Ingénieur Qualité; Sous-traitant; Technicien Production | 800h | 17,000 |
| 81 | 4.2 | Mise en œuvre de l’assistance au sous-traitant |  | 60d | 2018-10-24 08:00 | 2019-01-18 17:00 | 72, 80SS | -6d | 0d |  |  |  | Contrôleur Qualité | 480h | 7,200 |
| 82 | 4.3 | Livraison stabilisée en termes logistique et qualité |  | 40d | 2018-11-22 08:00 | 2019-01-18 17:00 | 80SS+1%, 81SS+10d | 0d |  | as late as possible |  |  | Responsable Logistique | 320h | 9,600 |
| 83 | 5 | Obtention du label qualité | milestone | 0d | 2019-01-18 17:00 | 2019-01-18 17:00 | 82, 81, 80 | -6d | 0d |  | 2019-01-10 17:00 |  |  |  |  |
