# VÉLO MMO

Schedule from MS Project, 2018-04-03 to 2019-02-19, status date 2018-07-20, costs in €, A marks actual dates.
Externalisation de la fabrication des moteurs éle
VÉLO MMO

## Calendars

- Projet VÉLO MMO: Mon-Fri 08:00-12:00, 13:00-17:00; Sat-Sun off. Exceptions (off unless hours are given): 2018-05-01 to 2022-05-01 (Fête du travail, recurring), 2018-05-08 (Victoire 1945), 2018-05-10 (Ascension), 2018-07-14 to 2022-07-14 (Fête nationale, recurring), 2018-08-01 to 2018-08-07 (Fermeture du site), 2018-08-15 to 2022-08-15 (Assomption , recurring), 2018-11-01 to 2022-11-01 (Toussaint , recurring), 2018-11-11 to 2022-11-11 (Armistice , recurring), 2018-12-25 (Noël), 2019-01-01 to 2023-01-01 (Jour de l'an, recurring).
- Samedis travaillés: Mon-Fri 08:00-12:00, 13:00-17:00; Sat 08:00-12:00, 13:00-18:00; Sun off. Exceptions (off unless hours are given): 2018-05-01 to 2022-05-01 (Fête du travail, recurring), 2018-05-08 (Victoire 1945), 2018-05-10 (Ascension), 2018-07-14 to 2022-07-14 (Fête nationale, recurring), 2018-08-01 to 2018-08-07 (Fermeture du site), 2018-08-15 to 2022-08-15 (Assomption , recurring), 2018-11-01 to 2022-11-01 (Toussaint , recurring), 2018-11-11 to 2022-11-11 (Armistice , recurring), 2018-12-25 (Noël), 2019-01-01 to 2023-01-01 (Jour de l'an, recurring).

## Resources

| Resource | Unit | Rate | Cost per use |
| --- | --- | --- | --- |
| Acheteur |  | 35 |  |
| Ingénieur Qualité |  | 25 |  |
| Contrôleur Qualité |  | 15 |  |
| Ingénieur Industrialisation |  | 35 |  |
| Ingénieur Production |  | 25 |  |
| Informaticien |  | 20 |  |
| Responsable Logistique |  | 30 |  |
| Formateur |  | 30 |  |
| Sous-traitant |  |  | 1000 |
| Technicien Production |  | 15 |  |
| Licences Logiciel de gestion des commandes | Licence | 1500 |  |
| Serveur Logiciel de gestion des commandes | Unité | 1000 |  |
| Frais de déplacement |  |  |  |
| Fournitures diverses |  |  |  |
| Outillage Industrialisation |  |  |  |
| Chef de projet |  | 50 |  |

## Schedule

| ID | WBS | Task | Duration | Start | Finish | Complete | Remaining | Baseline start | Baseline finish | Baseline duration | Baseline 1 start | Baseline 1 finish | Total slack | Constraint | Resources | Work | Actual work | Cost | Baseline cost | Actual cost | Dérive Délais | Dérive charges | Dérive coûts |
| --- | --- | --- | --- | --- | --- | --- | --- | --- | --- | --- | --- | --- | --- | --- | --- | --- | --- | --- | --- | --- | --- | --- | --- |
| 1 | 1 | Pilotage du projet | 209d? | 2018-04-03 08:00 A | 2019-02-19 17:00 | 16% | 178d? | 2018-04-03 08:00 | 2019-02-19 17:00 | 209d? |  |  | 0d |  | Chef de projet [30%] | 501.6h | 86.4h | 25,080 | 25,080 | 4,320 | Pas de dérive (<= 10%) | Pas de dérive (<= 10%) | Pas de dérive (<= 10%) |
| 2 | 2 | **Revue du projet** | 187.25d? | 2018-04-03 08:00 A | 2019-01-07 10:00 | 17% | 155.38d? | 2018-04-06 08:00 | 2019-01-07 10:00 | 184.25d | 2018-04-03 08:00 | 2019-01-07 10:00 | 31.75d |  |  |  |  |  |  |  | Pas de dérive (<= 10%) | Sans travail | Sans coût |
| 3 | 2.1 | Revue du projet 1 | 2h | 2018-04-06 08:00 A | 2018-04-06 10:00 A | 100% |  | 2018-04-06 08:00 | 2018-04-06 10:00 | 2h | 2018-04-03 08:00 | 2018-04-03 10:00 |  | start no earlier than 2018-04-02 08:00 |  |  |  |  |  |  | Pas de dérive (<= 10%) | Sans travail | Sans coût |
| 4 | 2.2 | Revue du projet 2 | 2h | 2018-04-09 08:00 A | 2018-04-09 10:00 A | 100% |  | 2018-04-09 08:00 | 2018-04-09 10:00 | 2h | 2018-04-09 08:00 | 2018-04-09 10:00 |  | start no earlier than 2018-04-09 08:00 |  |  |  |  |  |  | Pas de dérive (<= 10%) | Sans travail | Sans coût |
| 5 | 2.3 | Revue du projet 3 | 2h | 2018-04-16 08:00 A | 2018-04-16 10:00 A | 100% |  | 2018-04-16 08:00 | 2018-04-16 10:00 | 2h | 2018-04-16 08:00 | 2018-04-16 10:00 |  | start no earlier than 2018-04-16 08:00 |  |  |  |  |  |  | Pas de dérive (<= 10%) | Sans travail | Sans coût |
| 6 | 2.4 | Revue du projet 4 | 2h | 2018-04-23 08:00 A | 2018-04-23 10:00 A | 100% |  | 2018-04-23 08:00 | 2018-04-23 10:00 | 2h | 2018-04-23 08:00 | 2018-04-23 10:00 |  | start no earlier than 2018-04-23 08:00 |  |  |  |  |  |  | Pas de dérive (<= 10%) | Sans travail | Sans coût |
| 7 | 2.5 | Revue du projet 5 | 2h | 2018-04-30 08:00 A | 2018-04-30 10:00 A | 100% |  | 2018-04-30 08:00 | 2018-04-30 10:00 | 2h | 2018-04-30 08:00 | 2018-04-30 10:00 |  | start no earlier than 2018-04-30 08:00 |  |  |  |  |  |  | Pas de dérive (<= 10%) | Sans travail | Sans coût |
| 8 | 2.6 | Revue du projet 6 | 2h | 2018-05-07 08:00 A | 2018-05-07 10:00 A | 100% |  | 2018-05-07 08:00 | 2018-05-07 10:00 | 2h | 2018-05-07 08:00 | 2018-05-07 10:00 |  | start no earlier than 2018-05-07 08:00 |  |  |  |  |  |  | Pas de dérive (<= 10%) | Sans travail | Sans coût |
| 9 | 2.7 | Revue du projet 7 | 2h | 2018-05-14 08:00 A | 2018-05-14 10:00 A | 100% |  | 2018-05-14 08:00 | 2018-05-14 10:00 | 2h | 2018-05-14 08:00 | 2018-05-14 10:00 |  | start no earlier than 2018-05-14 08:00 |  |  |  |  |  |  | Pas de dérive (<= 10%) | Sans travail | Sans coût |
| 10 | 2.8 | Revue du projet 8 | 2h | 2018-06-08 08:00 A | 2018-06-08 10:00 A | 100% |  | 2018-06-04 08:00 | 2018-06-04 10:00 | 2h | 2018-05-21 08:00 | 2018-05-21 10:00 |  | start no earlier than 2018-06-01 17:00 |  |  |  |  |  |  | Pas de dérive (<= 10%) | Sans travail | Sans coût |
| 11 | 2.9 | Revue du projet 11 | 2h | 2018-06-11 08:00 | 2018-06-11 10:00 |  |  | 2018-06-11 08:00 | 2018-06-11 10:00 | 2h | 2018-06-11 08:00 | 2018-06-11 10:00 | 172.75d | start no earlier than 2018-06-11 08:00 |  |  |  |  |  |  | Pas de dérive (<= 10%) | Sans travail | Sans coût |
| 12 | 2.10 | Revue du projet 12 | 2h | 2018-06-18 08:00 | 2018-06-18 10:00 |  |  | 2018-06-18 08:00 | 2018-06-18 10:00 | 2h | 2018-06-18 08:00 | 2018-06-18 10:00 | 167.75d | start no earlier than 2018-06-18 08:00 |  |  |  |  |  |  | Pas de dérive (<= 10%) | Sans travail | Sans coût |
| 13 | 2.11 | Revue du projet 13 | 2h | 2018-06-25 08:00 | 2018-06-25 10:00 |  |  | 2018-06-25 08:00 | 2018-06-25 10:00 | 2h | 2018-06-25 08:00 | 2018-06-25 10:00 | 162.75d | start no earlier than 2018-06-25 08:00 |  |  |  |  |  |  | Pas de dérive (<= 10%) | Sans travail | Sans coût |
| 14 | 2.12 | Revue du projet 14 | 2h | 2018-07-02 08:00 | 2018-07-02 10:00 |  |  | 2018-07-02 08:00 | 2018-07-02 10:00 | 2h | 2018-07-02 08:00 | 2018-07-02 10:00 | 157.75d | start no earlier than 2018-07-02 08:00 |  |  |  |  |  |  | Pas de dérive (<= 10%) | Sans travail | Sans coût |
| 15 | 2.13 | Revue du projet 15 | 2h | 2018-07-09 08:00 | 2018-07-09 10:00 |  |  | 2018-07-09 08:00 | 2018-07-09 10:00 | 2h | 2018-07-09 08:00 | 2018-07-09 10:00 | 152.75d | start no earlier than 2018-07-09 08:00 |  |  |  |  |  |  | Pas de dérive (<= 10%) | Sans travail | Sans coût |
| 16 | 2.14 | Revue du projet 16 | 2h | 2018-07-16 08:00 | 2018-07-16 10:00 |  |  | 2018-07-16 08:00 | 2018-07-16 10:00 | 2h | 2018-07-16 08:00 | 2018-07-16 10:00 | 147.75d | start no earlier than 2018-07-16 08:00 |  |  |  |  |  |  | Pas de dérive (<= 10%) | Sans travail | Sans coût |
| 17 | 2.15 | Revue du projet 17 | 2h | 2018-07-23 08:00 | 2018-07-23 10:00 |  |  | 2018-07-23 08:00 | 2018-07-23 10:00 | 2h | 2018-07-23 08:00 | 2018-07-23 10:00 | 142.75d | start no earlier than 2018-07-23 08:00 |  |  |  |  |  |  | Pas de dérive (<= 10%) | Sans travail | Sans coût |
| 18 | 2.16 | Revue du projet 18 | 2h | 2018-07-30 08:00 | 2018-07-30 10:00 |  |  | 2018-07-30 08:00 | 2018-07-30 10:00 | 2h | 2018-07-30 08:00 | 2018-07-30 10:00 | 137.75d | start no earlier than 2018-07-30 08:00 |  |  |  |  |  |  | Pas de dérive (<= 10%) | Sans travail | Sans coût |
| 19 | 2.17 | Revue du projet 19 | 2h | 2018-08-08 08:00 | 2018-08-08 10:00 |  |  | 2018-08-08 08:00 | 2018-08-08 10:00 | 2h | 2018-08-08 08:00 | 2018-08-08 10:00 | 135.75d | start no earlier than 2018-08-06 08:00 |  |  |  |  |  |  | Pas de dérive (<= 10%) | Sans travail | Sans coût |
| 20 | 2.18 | Revue du projet 20 | 2h | 2018-08-13 08:00 | 2018-08-13 10:00 |  |  | 2018-08-13 08:00 | 2018-08-13 10:00 | 2h | 2018-08-13 08:00 | 2018-08-13 10:00 | 132.75d | start no earlier than 2018-08-13 08:00 |  |  |  |  |  |  | Pas de dérive (<= 10%) | Sans travail | Sans coût |
| 21 | 2.19 | Revue du projet 21 | 2h | 2018-08-20 08:00 | 2018-08-20 10:00 |  |  | 2018-08-20 08:00 | 2018-08-20 10:00 | 2h | 2018-08-20 08:00 | 2018-08-20 10:00 | 128.75d | start no earlier than 2018-08-20 08:00 |  |  |  |  |  |  | Pas de dérive (<= 10%) | Sans travail | Sans coût |
| 22 | 2.20 | Revue du projet 22 | 2h | 2018-08-27 08:00 | 2018-08-27 10:00 |  |  | 2018-08-27 08:00 | 2018-08-27 10:00 | 2h | 2018-08-27 08:00 | 2018-08-27 10:00 | 123.75d | start no earlier than 2018-08-27 08:00 |  |  |  |  |  |  | Pas de dérive (<= 10%) | Sans travail | Sans coût |
| 23 | 2.21 | Revue du projet 23 | 2h | 2018-09-03 08:00 | 2018-09-03 10:00 |  |  | 2018-09-03 08:00 | 2018-09-03 10:00 | 2h | 2018-09-03 08:00 | 2018-09-03 10:00 | 118.75d | start no earlier than 2018-09-03 08:00 |  |  |  |  |  |  | Pas de dérive (<= 10%) | Sans travail | Sans coût |
| 24 | 2.22 | Revue du projet 24 | 2h | 2018-09-10 08:00 | 2018-09-10 10:00 |  |  | 2018-09-10 08:00 | 2018-09-10 10:00 | 2h | 2018-09-10 08:00 | 2018-09-10 10:00 | 113.75d | start no earlier than 2018-09-10 08:00 |  |  |  |  |  |  | Pas de dérive (<= 10%) | Sans travail | Sans coût |
| 25 | 2.23 | Revue du projet 25 | 2h | 2018-09-17 08:00 | 2018-09-17 10:00 |  |  | 2018-09-17 08:00 | 2018-09-17 10:00 | 2h | 2018-09-17 08:00 | 2018-09-17 10:00 | 108.75d | start no earlier than 2018-09-17 08:00 |  |  |  |  |  |  | Pas de dérive (<= 10%) | Sans travail | Sans coût |
| 26 | 2.24 | Revue du projet 26 | 2h | 2018-09-24 08:00 | 2018-09-24 10:00 |  |  | 2018-09-24 08:00 | 2018-09-24 10:00 | 2h | 2018-09-24 08:00 | 2018-09-24 10:00 | 103.75d | start no earlier than 2018-09-24 08:00 |  |  |  |  |  |  | Pas de dérive (<= 10%) | Sans travail | Sans coût |
| 27 | 2.25 | Revue du projet 27 | 2h | 2018-10-01 08:00 | 2018-10-01 10:00 |  |  | 2018-10-01 08:00 | 2018-10-01 10:00 | 2h | 2018-10-01 08:00 | 2018-10-01 10:00 | 98.75d | start no earlier than 2018-10-01 08:00 |  |  |  |  |  |  | Pas de dérive (<= 10%) | Sans travail | Sans coût |
| 28 | 2.26 | Revue du projet 28 | 2h | 2018-10-08 08:00 | 2018-10-08 10:00 |  |  | 2018-10-08 08:00 | 2018-10-08 10:00 | 2h | 2018-10-08 08:00 | 2018-10-08 10:00 | 93.75d | start no earlier than 2018-10-08 08:00 |  |  |  |  |  |  | Pas de dérive (<= 10%) | Sans travail | Sans coût |
| 29 | 2.27 | Revue du projet 29 | 2h | 2018-10-15 08:00 | 2018-10-15 10:00 |  |  | 2018-10-15 08:00 | 2018-10-15 10:00 | 2h | 2018-10-15 08:00 | 2018-10-15 10:00 | 88.75d | start no earlier than 2018-10-15 08:00 |  |  |  |  |  |  | Pas de dérive (<= 10%) | Sans travail | Sans coût |
| 30 | 2.28 | Revue du projet 30 | 2h | 2018-10-22 08:00 | 2018-10-22 10:00 |  |  | 2018-10-22 08:00 | 2018-10-22 10:00 | 2h | 2018-10-22 08:00 | 2018-10-22 10:00 | 83.75d | start no earlier than 2018-10-22 08:00 |  |  |  |  |  |  | Pas de dérive (<= 10%) | Sans travail | Sans coût |
| 31 | 2.29 | Revue du projet 31 | 2h | 2018-10-29 08:00 | 2018-10-29 10:00 |  |  | 2018-10-29 08:00 | 2018-10-29 10:00 | 2h | 2018-10-29 08:00 | 2018-10-29 10:00 | 78.75d | start no earlier than 2018-10-29 08:00 |  |  |  |  |  |  | Pas de dérive (<= 10%) | Sans travail | Sans coût |
| 32 | 2.30 | Revue du projet 32 | 2h | 2018-11-05 08:00 | 2018-11-05 10:00 |  |  | 2018-11-05 08:00 | 2018-11-05 10:00 | 2h | 2018-11-05 08:00 | 2018-11-05 10:00 | 74.75d | start no earlier than 2018-11-05 08:00 |  |  |  |  |  |  | Pas de dérive (<= 10%) | Sans travail | Sans coût |
| 33 | 2.31 | Revue du projet 33 | 2h | 2018-11-12 08:00 | 2018-11-12 10:00 |  |  | 2018-11-12 08:00 | 2018-11-12 10:00 | 2h | 2018-11-12 08:00 | 2018-11-12 10:00 | 69.75d | start no earlier than 2018-11-12 08:00 |  |  |  |  |  |  | Pas de dérive (<= 10%) | Sans travail | Sans coût |
| 34 | 2.32 | Revue du projet 34 | 2h | 2018-11-19 08:00 | 2018-11-19 10:00 |  |  | 2018-11-19 08:00 | 2018-11-19 10:00 | 2h | 2018-11-19 08:00 | 2018-11-19 10:00 | 64.75d | start no earlier than 2018-11-19 08:00 |  |  |  |  |  |  | Pas de dérive (<= 10%) | Sans travail | Sans coût |
| 35 | 2.33 | Revue du projet 35 | 2h | 2018-11-26 08:00 | 2018-11-26 10:00 |  |  | 2018-11-26 08:00 | 2018-11-26 10:00 | 2h | 2018-11-26 08:00 | 2018-11-26 10:00 | 59.75d | start no earlier than 2018-11-26 08:00 |  |  |  |  |  |  | Pas de dérive (<= 10%) | Sans travail | Sans coût |
| 36 | 2.34 | Revue du projet 36 | 2h | 2018-12-03 08:00 | 2018-12-03 10:00 |  |  | 2018-12-03 08:00 | 2018-12-03 10:00 | 2h | 2018-12-03 08:00 | 2018-12-03 10:00 | 54.75d | start no earlier than 2018-12-03 08:00 |  |  |  |  |  |  | Pas de dérive (<= 10%) | Sans travail | Sans coût |
| 37 | 2.35 | Revue du projet 37 | 2h | 2018-12-10 08:00 | 2018-12-10 10:00 |  |  | 2018-12-10 08:00 | 2018-12-10 10:00 | 2h | 2018-12-10 08:00 | 2018-12-10 10:00 | 49.75d | start no earlier than 2018-12-10 08:00 |  |  |  |  |  |  | Pas de dérive (<= 10%) | Sans travail | Sans coût |
| 38 | 2.36 | Revue du projet 38 | 2h | 2018-12-17 08:00 | 2018-12-17 10:00 |  |  | 2018-12-17 08:00 | 2018-12-17 10:00 | 2h | 2018-12-17 08:00 | 2018-12-17 10:00 | 44.75d | start no earlier than 2018-12-17 08:00 |  |  |  |  |  |  | Pas de dérive (<= 10%) | Sans travail | Sans coût |
| 39 | 2.37 | Revue du projet 39 | 2h | 2018-12-24 08:00 | 2018-12-24 10:00 |  |  | 2018-12-24 08:00 | 2018-12-24 10:00 | 2h | 2018-12-24 08:00 | 2018-12-24 10:00 | 39.75d | start no earlier than 2018-12-24 08:00 |  |  |  |  |  |  | Pas de dérive (<= 10%) | Sans travail | Sans coût |
| 40 | 2.38 | Revue du projet 40 | 2h | 2018-12-31 08:00 | 2018-12-31 10:00 |  |  | 2018-12-31 08:00 | 2018-12-31 10:00 | 2h | 2018-12-31 08:00 | 2018-12-31 10:00 | 35.75d | start no earlier than 2018-12-31 08:00 |  |  |  |  |  |  | Pas de dérive (<= 10%) | Sans travail | Sans coût |
| 41 | 2.39 | A | 1d? | 2018-04-03 08:00 | 2018-04-03 17:00 |  |  |  |  |  |  |  | 218d |  |  |  |  |  |  |  | Pas de référence | Sans travail | Sans coût |
| 42 | 2.40 | B | 1d? | 2018-04-03 08:00 | 2018-04-03 17:00 |  |  |  |  |  |  |  | 218d |  |  |  |  |  |  |  | Pas de référence | Sans travail | Sans coût |
| 43 | 2.41 | Revue du projet 41 | 2h | 2019-01-07 08:00 | 2019-01-07 10:00 |  |  | 2019-01-07 08:00 | 2019-01-07 10:00 | 2h | 2019-01-07 08:00 | 2019-01-07 10:00 | 31.75d | start no earlier than 2019-01-07 08:00 |  |  |  |  |  |  | Pas de dérive (<= 10%) | Sans travail | Sans coût |

| ID | WBS | Task | Type | Duration | Start | Finish | Predecessors | Complete | Remaining | Baseline start | Baseline finish | Baseline duration | Baseline 1 start | Baseline 1 finish | Total slack | Free slack | Constraint | Deadline | Resources | Work | Actual work | Cost | Baseline cost | Actual cost | Dérive Délais | Dérive charges | Dérive coûts |
| --- | --- | --- | --- | --- | --- | --- | --- | --- | --- | --- | --- | --- | --- | --- | --- | --- | --- | --- | --- | --- | --- | --- | --- | --- | --- | --- | --- |
| 44 | 3 | **Choix du sous-traitant** |  | 70d | 2018-04-03 08:00 A | 2018-07-13 08:00 |  | 97% | 2.14d | 2018-04-03 08:00 | 2018-07-16 17:00 | 72d | 2018-04-03 08:00 | 2018-07-05 17:00 | 0d |  |  |  |  | 848.8h | 848.8h | 26,000 | 14,096 | 26,000 | Pas de dérive (<= 10%) | Pas de dérive (<= 10%) | Dérive majeure (> 20%) |
| 45 | 3.1 | **Appel d'offre et consultation** |  | 53d | 2018-04-03 08:00 A | 2018-06-19 17:00 A |  | 100% |  | 2018-04-03 08:00 | 2018-06-19 17:00 | 53d | 2018-04-03 08:00 | 2018-06-06 17:00 |  |  |  |  |  | 549.6h | 549.6h | 16,920 | 4,560 | 16,920 | Pas de dérive (<= 10%) | Pas de dérive (<= 10%) | Dérive majeure (> 20%) |
| 46 | 3.1.1 | Constitution du cahier des charges |  | 15d | 2018-04-03 08:00 A | 2018-04-23 17:00 A |  | 100% |  | 2018-04-03 08:00 | 2018-04-23 17:00 | 15d | 2018-04-03 08:00 | 2018-04-23 17:00 |  |  |  |  | Acheteur; Ingénieur Qualité [50%]; Ingénieur Industrialisation [20%]; Responsable Logistique [10%]; Ingénieur Production [10%] | 228h | 228h | 7,480 |  | 7,480 | Pas de dérive (<= 10%) | Pas de dérive (<= 10%) | Pas de référence |
| 47 | 3.1.2 | Sélection des sous-traitants |  | 10d | 2018-04-24 08:00 A | 2018-05-09 17:00 A | 46 | 100% |  | 2018-04-24 08:00 | 2018-05-09 17:00 | 10d | 2018-04-24 08:00 | 2018-05-09 17:00 |  |  |  |  | Acheteur [50%]; Ingénieur Qualité [50%] | 80h | 80h | 2,400 |  | 2,400 | Pas de dérive (<= 10%) | Pas de dérive (<= 10%) | Pas de référence |
| 48 | 3.1.3 | Lancement des appels d’offres |  | 3d | 2018-05-11 08:00 A | 2018-05-15 17:00 A | 47 | 100% |  | 2018-05-11 08:00 | 2018-05-15 17:00 | 3d | 2018-05-11 08:00 | 2018-05-15 17:00 |  |  |  |  | Acheteur | 24h | 24h | 840 |  | 840 | Pas de dérive (<= 10%) | Pas de dérive (<= 10%) | Pas de référence |
| 49 | 3.1.4 | Etablissement des grilles de sélection du sous-traitant |  | 8d | 2018-05-16 08:00 A | 2018-06-07 17:00 A | 48 | 100% |  | 2018-05-16 08:00 | 2018-06-07 17:00 | 8d | 2018-05-16 08:00 | 2018-05-22 17:00 |  |  |  |  | Acheteur [50%]; Ingénieur Qualité [50%] | 56h | 56h | 1,640 |  | 1,640 | Pas de dérive (<= 10%) | Pas de dérive (<= 10%) | Pas de référence |
| 50 | 3.1.5 | Définition du processus industriel |  | 25d | 2018-05-16 08:00 A | 2018-06-19 17:00 A | 49SS | 100% |  | 2018-05-16 08:00 | 2018-06-19 17:00 | 25d | 2018-05-16 08:00 | 2018-05-29 17:00 |  |  |  |  | Ingénieur Qualité [50%]; Ingénieur Industrialisation [50%]; Acheteur [10%] | 92h | 92h | 2,400 | 2,400 | 2,400 | Pas de dérive (<= 10%) | Pas de dérive (<= 10%) | Pas de dérive (<= 10%) |
| 51 | 3.1.6 | Choix du processus d’approvisionnement logistique |  | 3d | 2018-06-01 08:00 A | 2018-06-05 17:00 A | 50SS+3% | 100% |  | 2018-06-04 08:00 | 2018-06-06 17:00 | 3d | 2018-05-30 08:00 | 2018-06-01 17:00 |  |  | start no earlier than 2018-06-01 17:00 |  | Responsable Logistique; Ingénieur Qualité [50%]; Acheteur [10%] | 38.4h | 38.4h | 1,104 | 1,104 | 1,104 | Pas de dérive (<= 10%) | Pas de dérive (<= 10%) | Pas de dérive (<= 10%) |
| 52 | 3.1.7 | Estimation de prix de référence (prix d’achat) |  | 3d | 2018-06-07 08:00 A | 2018-06-11 17:00 A | 51 | 100% |  | 2018-06-07 08:00 | 2018-06-11 17:00 | 3d | 2018-06-04 08:00 | 2018-06-06 17:00 |  |  |  |  | Acheteur; Ingénieur Production [10%]; Responsable Logistique [10%]; Ingénieur Industrialisation [10%] | 31.2h | 31.2h | 1,056 | 1,056 | 1,056 | Pas de dérive (<= 10%) | Pas de dérive (<= 10%) | Pas de dérive (<= 10%) |
| 53 | 3.2 | Retour des offres des sous-traitants | milestone | 0d | 2018-06-04 08:00 A | 2018-06-04 08:00 A | 48FS+10d | 100% |  | 2018-06-01 17:00 | 2018-06-01 17:00 | 0d | 2018-05-29 17:00 | 2018-05-29 17:00 |  |  | start no earlier than 2018-06-04 08:00 | 2018-05-29 17:00 |  |  |  |  |  |  | Jalon | Sans travail | Sans coût |
| 54 | 3.3 | **Analyse et sélection du sous-traitant** |  | 26d | 2018-06-07 08:00 A | 2018-07-12 17:00 |  | 90% | 2.52d | 2018-06-08 08:00 | 2018-07-16 17:00 | 27d | 2018-05-30 08:00 | 2018-07-05 17:00 | 0d |  |  |  |  | 299.2h | 299.2h | 9,080 | 9,536 | 9,080 | Pas de dérive (<= 10%) | Dérive mineure (10% à 20%) | Pas de dérive (<= 10%) |
| 55 | 3.3.1 | Revue des offres avec les sous-traitants |  | 12d | 2018-06-07 08:00 A | 2018-06-25 17:00 A | 53, 49 | 100% |  | 2018-06-08 08:00 | 2018-06-22 17:00 | 11d | 2018-05-30 08:00 | 2018-06-13 17:00 |  |  | start no earlier than 2018-06-01 17:00 |  | Acheteur; Ingénieur Qualité [20%]; Responsable Logistique [20%]; Ingénieur Production [20%]; Ingénieur Industrialisation [20%] | 128h | 128h | 2,384 | 3,712 | 2,384 | Pas de dérive (<= 10%) | Dérive mineure (10% à 20%) | Pas de dérive (<= 10%) |
| 56 | 3.3.2 | Négociation avec les sous-traitants |  | 10d | 2018-06-27 08:00 A | 2018-07-10 17:00 A | 55, 52 | 100% |  | 2018-06-25 08:00 | 2018-07-04 17:00 | 8d | 2018-06-14 08:00 | 2018-06-25 17:00 |  |  |  |  | Acheteur; Frais de déplacement [0.1%] | 80h | 80h | 3,800 | 3,240 | 3,800 | Dérive majeure (> 20%) | Dérive majeure (> 20%) | Dérive mineure (10% à 20%) |
| 57 | 3.3.3 | Sélection d’un sous-traitant |  | 2d | 2018-07-11 08:00 A | 2018-07-12 17:00 A | 56 | 100% |  | 2018-07-05 08:00 | 2018-07-06 17:00 | 2d | 2018-06-26 08:00 | 2018-06-27 17:00 |  |  |  |  | Acheteur; Ingénieur Qualité [20%]; Responsable Logistique [20%]; Ingénieur Production [20%]; Ingénieur Industrialisation [20%] | 28.8h | 28.8h | 928 | 928 | 928 | Pas de dérive (<= 10%) | Pas de dérive (<= 10%) | Pas de dérive (<= 10%) |
| 58 | 3.3.4 | Lancement de la procédure d’agrément du sous-traitant |  | 4d | 2018-07-04 08:00 A | 2018-07-09 17:00 A | 57 | 100% |  | 2018-07-09 08:00 | 2018-07-11 17:00 | 3d | 2018-06-28 08:00 | 2018-07-02 17:00 |  |  |  |  | Acheteur; Ingénieur Qualité [10%]; Contrôleur Qualité [10%] | 38.4h | 38.4h | 1,248 | 936 | 1,248 | Dérive majeure (> 20%) | Dérive majeure (> 20%) | Dérive majeure (> 20%) |
| 59 | 3.3.5 | Lancement de l’analyse des risques |  | 3d | 2018-07-10 08:00 A | 2018-07-12 17:00 | 58 |  | 3d | 2018-07-12 08:00 | 2018-07-16 17:00 | 3d | 2018-07-03 08:00 | 2018-07-05 17:00 | 0d |  |  |  | Acheteur [50%]; Ingénieur Qualité [50%] | 24h | 24h | 720 | 720 | 720 | Pas de dérive (<= 10%) | Pas de dérive (<= 10%) | Pas de dérive (<= 10%) |
| 60 | 3.4 | Signature du contrat d’achat | milestone | 0d | 2018-07-13 08:00 A | 2018-07-13 08:00 A | 59 | 100% |  | 2018-07-16 17:00 | 2018-07-16 17:00 | 0d | 2018-07-05 17:00 | 2018-07-05 17:00 |  |  |  | 2018-07-02 17:00 |  |  |  |  |  |  | Jalon | Sans travail | Sans coût |
| 61 | 4 | **Industrialisation et validation du sous-traitant** |  | 69d | 2018-07-16 08:00 A | 2018-10-26 17:00 |  | 6% | 64.94d | 2018-07-17 08:00 | 2018-10-29 17:00 | 69d | 2018-07-06 08:00 | 2018-10-23 17:00 | -9d | 0d |  |  |  | 916h | 108h | 26,420 | 26,420 | 3,440 | Pas de dérive (<= 10%) | Pas de dérive (<= 10%) | Pas de dérive (<= 10%) |
| 62 | 4.1 | **Préparation de l'industrialisation** |  | 19d | 2018-07-16 08:00 A | 2018-08-17 17:00 |  | 20% | 15.2d | 2018-07-17 08:00 | 2018-08-20 17:00 | 19d | 2018-07-06 08:00 | 2018-08-08 17:00 | -6d | 0d |  |  |  | 300h | 108h | 13,180 | 13,180 | 3,440 | Pas de dérive (<= 10%) | Pas de dérive (<= 10%) | Pas de dérive (<= 10%) |
| 63 | 4.1.1 | Réalisation du planning d’industrialisation |  | 5d | 2018-07-16 08:00 A | 2018-07-20 17:00 A | 60 | 100% |  | 2018-07-17 08:00 | 2018-07-23 17:00 | 5d | 2018-07-06 08:00 | 2018-07-12 17:00 |  |  |  |  | Acheteur [50%]; Ingénieur Industrialisation; Responsable Logistique [50%]; Ingénieur Production [50%] | 100h | 100h | 3,200 | 3,200 | 3,200 | Pas de dérive (<= 10%) | Pas de dérive (<= 10%) | Pas de dérive (<= 10%) |
| 64 | 4.1.2 | Planification des formations du personnel |  | 1d | 2018-07-23 08:00 A | 2018-07-23 17:00 A | 63 | 100% |  | 2018-07-24 08:00 | 2018-07-24 17:00 | 1d | 2018-07-13 08:00 | 2018-07-13 17:00 |  |  |  |  | Formateur | 8h | 8h | 240 | 240 | 240 | Pas de dérive (<= 10%) | Pas de dérive (<= 10%) | Pas de dérive (<= 10%) |
| 65 | 4.1.3 | Téléchargement des logiciels de gestion des commandes |  | 2d | 2018-07-24 08:00 | 2018-07-25 17:00 | 64 |  |  | 2018-07-25 08:00 | 2018-07-26 17:00 | 2d | 2018-07-16 08:00 | 2018-07-17 17:00 | -14d | 0d |  |  | Technicien Production; Fournitures diverses [0.1%] | 16h |  | 740 | 740 |  | Pas de dérive (<= 10%) | Pas de dérive (<= 10%) | Pas de dérive (<= 10%) |
| 66 | 4.1.4 | Initialisation du Dossier de validation industrielle (Budget, programme de validation, planning...) |  | 8d | 2018-07-26 08:00 | 2018-08-13 17:00 | 65 |  |  | 2018-07-27 08:00 | 2018-08-14 17:00 | 8d | 2018-07-18 08:00 | 2018-07-27 17:00 | -14d | 0d |  |  | Acheteur | 64h |  | 2,240 | 2,240 |  | Pas de dérive (<= 10%) | Pas de dérive (<= 10%) | Pas de dérive (<= 10%) |
| 67 | 4.1.5 | Commande des pièces de validation (proto) |  | 1d | 2018-08-14 08:00 | 2018-08-14 17:00 | 66 |  |  | 2018-08-16 08:00 | 2018-08-16 17:00 | 1d | 2018-07-30 08:00 | 2018-07-30 17:00 | -14d | 0d |  |  | Acheteur | 8h |  | 280 | 280 |  | Pas de dérive (<= 10%) | Pas de dérive (<= 10%) | Pas de dérive (<= 10%) |
| 68 | 4.1.6 | Téléchargement des logiciels de gestion des commandes |  | 3d | 2018-07-24 08:00 | 2018-07-26 17:00 | 65SS |  |  | 2018-07-25 08:00 | 2018-07-27 17:00 | 3d | 2018-07-16 08:00 | 2018-07-18 17:00 | -6d | 0d | start no earlier than 2018-07-16 08:00 |  | Informaticien | 24h |  | 480 | 480 |  | Pas de dérive (<= 10%) | Pas de dérive (<= 10%) | Pas de dérive (<= 10%) |
| 69 | 4.1.7 | Installation des logiciels de gestion des commandes |  | 5d | 2018-07-27 08:00 | 2018-08-09 17:00 | 68 |  |  | 2018-07-30 08:00 | 2018-08-10 17:00 | 5d | 2018-07-19 08:00 | 2018-07-25 17:00 | -6d | 0d |  |  | Informaticien; Serveur Logiciel de gestion des commandes [2 Unité]; Licences Logiciel de gestion des commandes [1 Licence] | 40h |  | 4,300 | 4,300 |  | Pas de dérive (<= 10%) | Pas de dérive (<= 10%) | Pas de dérive (<= 10%) |
| 70 | 4.1.8 | Formation et certification du personnel du sous-traitant |  | 5d | 2018-08-10 08:00 | 2018-08-17 17:00 | 69 |  |  | 2018-08-13 08:00 | 2018-08-20 17:00 | 5d | 2018-07-26 08:00 | 2018-08-08 17:00 | -6d | 0d |  |  | Formateur; Fournitures diverses [0.1%] | 40h |  | 1,700 | 1,700 |  | Pas de dérive (<= 10%) | Pas de dérive (<= 10%) | Pas de dérive (<= 10%) |
| 71 | 4.2 | Réception et validation du proto | milestone | 0d | 2018-08-29 17:00 | 2018-08-29 17:00 | 67FS+10d |  |  | 2018-08-30 17:00 | 2018-08-30 17:00 | 0d | 2018-08-21 17:00 | 2018-08-21 17:00 | -14d | 0d |  | 2018-08-16 17:00 |  |  |  |  |  |  | Jalon | Sans travail | Sans coût |

| ID | WBS | Task | Type | Duration | Start | Finish | Predecessors | Baseline start | Baseline finish | Baseline duration | Baseline 1 start | Baseline 1 finish | Total slack | Free slack | Constraint | Deadline | Calendar | Resources | Work | Cost | Baseline cost | Dérive Délais | Dérive charges | Dérive coûts |
| --- | --- | --- | --- | --- | --- | --- | --- | --- | --- | --- | --- | --- | --- | --- | --- | --- | --- | --- | --- | --- | --- | --- | --- | --- |
| 72 | 4.3 | **Industrialisation** |  | 60d | 2018-07-27 08:00 | 2018-10-26 17:00 |  | 2018-07-27 08:00 | 2018-10-29 17:00 | 61d | 2018-07-27 08:00 | 2018-10-23 17:00 | -9d | 0d |  |  |  |  | 616h | 13,240 | 13,240 | Pas de dérive (<= 10%) | Pas de dérive (<= 10%) | Pas de dérive (<= 10%) |
| 73 | 4.3.1 | Réalisation de missions technique en support du sous-traitant |  | 30d | 2018-07-27 08:00 | 2018-09-14 17:00 | 70FS-4d | 2018-07-27 08:00 | 2018-09-14 17:00 | 30d | 2018-07-27 08:00 | 2018-09-14 17:00 | -6d | 0d | finish no later than 2018-09-14 17:00 |  |  | Contrôleur Qualité; Outillage Industrialisation [0.1%] | 240h | 4,600 | 4,600 | Pas de dérive (<= 10%) | Pas de dérive (<= 10%) | Pas de dérive (<= 10%) |
| 74 | 4.3.2 | Mise en place d’un plan d’assurance qualité produit. |  | 15d | 2018-08-30 08:00 | 2018-09-19 17:00 | 71 | 2018-08-31 08:00 | 2018-09-20 17:00 | 15d | 2018-08-22 08:00 | 2018-09-11 17:00 | -14d | 0d |  |  |  | Ingénieur Qualité | 120h | 3,000 | 3,000 | Pas de dérive (<= 10%) | Pas de dérive (<= 10%) | Pas de dérive (<= 10%) |
| 75 | 4.3.3 | Etudes de Reproductibilité et Répétabilité |  | 10d | 2018-09-20 08:00 | 2018-10-03 17:00 | 74 | 2018-09-21 08:00 | 2018-10-04 17:00 | 10d | 2018-09-12 08:00 | 2018-09-25 17:00 | -14d | 0d |  |  |  | Ingénieur Qualité | 80h | 2,000 | 2,000 | Pas de dérive (<= 10%) | Pas de dérive (<= 10%) | Pas de dérive (<= 10%) |
| 76 | 4.3.4 | Réalisation du premier article |  | 10d | 2018-10-04 08:00 | 2018-10-17 17:00 | 69, 75 | 2018-10-05 08:00 | 2018-10-18 17:00 | 10d | 2018-09-26 08:00 | 2018-10-09 17:00 | -14d | 0d |  |  |  | Sous-traitant | 80h | 1,000 | 1,000 | Pas de dérive (<= 10%) | Pas de dérive (<= 10%) | Pas de dérive (<= 10%) |
| 77 | 4.3.5 | Contrôle des pièces de validation |  | 2d | 2018-10-18 08:00 | 2018-10-19 17:00 | 76 | 2018-10-19 08:00 | 2018-10-22 17:00 | 2d | 2018-10-15 08:00 | 2018-10-16 17:00 | -14d | 0d |  |  |  | Contrôleur Qualité | 16h | 240 | 240 | Pas de dérive (<= 10%) | Pas de dérive (<= 10%) | Pas de dérive (<= 10%) |
| 78 | 4.3.6 | Finalisation et validation du plan d’assurance qualité produit |  | 5d | 2018-10-22 08:00 | 2018-10-26 17:00 | 77 | 2018-10-23 08:00 | 2018-10-29 17:00 | 5d | 2018-10-17 08:00 | 2018-10-23 17:00 | -14d | 0d |  |  |  | Acheteur; Ingénieur Qualité | 80h | 2,400 | 2,400 | Pas de dérive (<= 10%) | Pas de dérive (<= 10%) | Pas de dérive (<= 10%) |
| 79 | 4.4 | Agrément du sous-traitant | milestone | 0d | 2018-10-26 17:00 | 2018-10-26 17:00 | 78 | 2018-10-29 17:00 | 2018-10-29 17:00 | 0d | 2018-10-23 17:00 | 2018-10-23 17:00 | -9d | 0d |  | 2018-10-15 17:00 |  |  |  |  |  | Jalon | Sans travail | Sans coût |
| 80 | 5 | **Mise en production** |  | 60d | 2018-10-29 08:00 | 2019-01-23 17:00 |  | 2018-10-30 08:00 | 2019-01-24 17:00 | 60d | 2018-10-24 08:00 | 2019-01-18 17:00 | -9d | 0d |  |  |  |  | 1600h | 33,800 | 33,800 | Pas de dérive (<= 10%) | Pas de dérive (<= 10%) | Pas de dérive (<= 10%) |
| 81 | 5.1 | Lancement des pièces de production |  | 20d | 2018-10-29 08:00 | 2018-11-26 17:00 | 79 | 2018-10-30 08:00 | 2018-11-27 17:00 | 20d | 2018-10-24 08:00 | 2018-11-21 17:00 | -11.25d | 0d |  |  | Samedis travaillés | Acheteur; Contrôleur Qualité; Ingénieur Production; Ingénieur Qualité; Sous-traitant | 800h | 17,000 | 17,000 | Pas de dérive (<= 10%) | Pas de dérive (<= 10%) | Pas de dérive (<= 10%) |
| 82 | 5.2 | Mise en œuvre de l’assistance au sous-traitant |  | 60d | 2018-10-29 08:00 | 2019-01-23 17:00 | 73, 81SS | 2018-10-30 08:00 | 2019-01-24 17:00 | 60d | 2018-10-24 08:00 | 2019-01-18 17:00 | -9d | 0d |  |  |  | Technicien Production | 480h | 7,200 | 7,200 | Pas de dérive (<= 10%) | Pas de dérive (<= 10%) | Pas de dérive (<= 10%) |
| 83 | 5.3 | Livraison stabilisée en termes logistique et qualité |  | 40d | 2018-11-27 08:00 | 2019-01-23 17:00 | 81SS+1%, 82SS+10d | 2018-11-28 08:00 | 2019-01-24 17:00 | 40d | 2018-11-22 08:00 | 2019-01-18 17:00 | 0d |  | as late as possible |  |  | Responsable Logistique | 320h | 9,600 | 9,600 | Pas de dérive (<= 10%) | Pas de dérive (<= 10%) | Pas de dérive (<= 10%) |
| 84 | 6 | Obtention du label qualité | milestone | 0d | 2019-01-23 17:00 | 2019-01-23 17:00 | 83, 82, 81 | 2019-01-24 17:00 | 2019-01-24 17:00 | 0d | 2019-01-18 17:00 | 2019-01-18 17:00 | -9d | 0d |  | 2019-01-10 17:00 |  |  |  |  |  | Jalon | Sans travail | Sans coût |
